# E Waste Recycle Project 30-9-2024

Schedule from MS Project, 2024-10-01 to 2025-09-30, costs in LE‏.

## Calendars

- E-Waste Project: Mon-Thu 08:00-12:00, 13:00-17:00; Fri-Sat off; Sun 08:00-12:00, 13:00-17:00. Exceptions (off unless hours are given): 2024-10-06 (Armed Forces Day), 2025-01-07 (Coptic Christmas Day), 2025-01-25 (25Jan Revolution Day), 2025-03-31 to 2025-04-02 (Eid Fitr), 2025-04-18 to 2025-04-21 (Spring Festival), 2025-04-25 (Sinai Revolution Day), 2025-05-01 (Labour Day), 2025-06-06 to 2025-06-09 (Adha Feast), 2025-06-30 (30th June Revolution), 2025-07-23 (23 July Revolution), 2025-08-15 (Flooading of the Nile), 2025-09-06 (Prophet Mohamed Birth Day).

## Resources

| Resource | Group | Rate |
| --- | --- | --- |
| Project Manager | kkdfk | 312.5 |
| Engineers | 1,000% | 125 |
| Technicians | 2,000% | 93.75 |
| Recycling Machines |  | 4000000 |
| Transportation |  |  |
| Safety Equipment |  | 750000 |
| Admin Staff |  | 93.75 |
| Permits Office |  |  |
| construction office |  |  |
| Procurement Staff |  |  |
| Operation Manager |  | 187.5 |

## Schedule

| ID | WBS | Task | Type | Duration | Start | Finish | Predecessors | Baseline start | Baseline finish | Baseline duration | Constraint | Resources | Work | Cost | Baseline cost |
| --- | --- | --- | --- | --- | --- | --- | --- | --- | --- | --- | --- | --- | --- | --- | --- |
| 1 | 1 | **Project Intitation** |  | 22d | 2024-10-01 | 2024-10-31 |  | 2024-10-01 | 2024-10-31 | 22d |  |  | 1232h | 190,500 | 13,200 |
| 2 | 1.1 | Project Planning | manual | 7d | 2024-10-01 | 2024-10-10 |  | 2024-10-01 | 2024-10-10 | 7d |  | Project Manager; Operation Manager; Engineers [500%] | 392h | 63,000 | 4,200 |
| 3 | 1.2 | Resource Allocation | manual | 6d | 2024-10-13 | 2024-10-20 | 2 | 2024-10-13 | 2024-10-20 | 6d |  | Project Manager; Operation Manager; Admin Staff [500%] | 336h | 46,500 | 3,600 |
| 4 | 1.3 | Schedule Finalized | manual | 9d | 2024-10-21 | 2024-10-31 | 3 | 2024-10-21 | 2024-10-31 | 9d |  | Project Manager; Operation Manager; Engineers [500%] | 504h | 81,000 | 5,400 |
| 5 | 2 | **Permits and Licensing** |  | 43d | 2024-11-03 | 2024-12-31 |  | 2024-11-03 | 2024-12-31 | 43d |  |  | 2520h | 286,250 | 3,000 |
| 6 | 2.1 | Environmental Permits Approved | manual | 20d | 2024-11-03 | 2024-11-28 | 4 | 2024-11-03 | 2024-11-28 | 20d |  | Admin Staff [500%]; Permits Office [0.1%] | 800h | 85,000 | 1,000 |
| 7 | 2.2 | Building Permits Approved | manual | 20d | 2024-11-03 | 2024-11-28 | 6SS | 2024-11-03 | 2024-11-28 | 20d |  | Admin Staff [500%]; Permits Office [0.1%] | 800h | 95,000 | 1,000 |
| 8 | 2.3 | Operational Licenses Obtained | manual | 23d | 2024-12-01 | 2024-12-31 | 7 | 2024-12-01 | 2024-12-31 | 23d |  | Admin Staff [500%]; Permits Office [0.1%] | 920h | 106,250 | 1,000 |
| 9 | 3 | **Facility Design and Construction** |  | 143d | 2024-12-01 | 2025-06-30 |  | 2024-12-01 | 2025-06-30 | 143d |  |  | 7872h | 6,020,417 | 227,700 |
| 10 | 3.1 | Facility Layout and Design | manual | 23d | 2024-12-01 | 2024-12-31 | 8SS | 2024-12-01 | 2024-12-31 | 23d |  | Engineers [500%]; construction office [0.1%] | 920h | 326,667 | 36,800 |
| 11 | 3.2 | Equipment Procured | manual | 21d | 2025-01-01 | 2025-01-30 | 10 | 2025-01-01 | 2025-01-30 | 21d |  | Recycling Machines |  | 4,000,000 | 8,400 |
| 12 | 3.3 | Construction of Facility | manual | 42d | 2025-02-02 | 2025-04-03 | 11 | 2025-01-01 | 2025-03-02 | 42d |  | Project Manager; Engineers [500%]; Technicians [1000%]; construction office [0.1%] | 5376h | 725,000 | 67,200 |
| 13 | 3.4 | Health & Safety Setup | manual | 27d | 2025-04-06 | 2025-05-15 | 12 | 2025-05-01 | 2025-05-29 | 21d |  | Engineers [300%]; Safety Equipment | 648h | 831,000 | 300 |
| 14 | 3.5 | Facility Inspection and Approval | manual | 29d | 2025-05-18 | 2025-06-29 | 13 | 2025-06-01 | 2025-06-30 | 20d | finish no earlier than 2025-06-29 | Project Manager; Admin Staff [300%] | 928h | 137,750 | 1,000 |
| 15 | 4 | **Recycling Operations Setup** |  | 22d | 2025-07-01 | 2025-07-31 |  | 2025-07-01 | 2025-07-31 | 22d |  |  | 3520h | 357,500 | 132,010 |
| 16 | 4.1 | Sorting Process Setup | manual | 11d | 2025-07-01 | 2025-07-15 | 14 | 2025-07-01 | 2025-07-15 | 11d |  | Engineers [300%]; Technicians [1000%] | 1144h | 115,500 | 66,000 |
| 17 | 4.2 | Recycling Equipment Setup | manual | 11d | 2025-07-16 | 2025-07-31 | 16 | 2025-07-16 | 2025-07-31 | 11d |  | Engineers [500%]; Technicians [1000%] | 1320h | 137,500 | 66,000 |
| 18 | 4.3 | Hazardous Materials Disposal System | manual | 11d | 2025-07-01 | 2025-07-15 | 16SS | 2025-07-01 | 2025-07-15 | 11d |  | Engineers [200%]; Technicians [1000%] | 1056h | 104,500 | 10 |
| 19 | 5 | **Manpower Hiring and Training** |  | 22d | 2025-07-01 | 2025-07-31 |  | 2025-07-01 | 2025-07-31 | 22d |  |  | 1760h | 165,000 | 19,536 |
| 20 | 5.1 | Hiring Process | manual | 22d | 2025-07-01 | 2025-07-31 | 18SS | 2025-07-01 | 2025-07-31 | 22d |  | Admin Staff [500%] | 880h | 82,500 | 13,024 |
| 21 | 5.2 | Training Programs | manual | 22d | 2025-07-01 | 2025-07-31 | 20SS | 2025-07-01 | 2025-07-31 | 22d |  | Admin Staff [500%] | 880h | 82,500 | 6,512 |
| 22 | 6 | **Community Engagement Programs** |  | 10d | 2025-08-03 | 2025-08-14 |  | 2025-08-03 | 2025-08-14 | 10d |  |  | 800h | 75,000 | 5,920 |
| 23 | 6.1 | Educational Programs Designed | manual | 10d | 2025-08-03 | 2025-08-14 | 21 | 2025-08-03 | 2025-08-14 | 10d |  | Admin Staff [500%] | 400h | 37,500 | 2,960 |
| 24 | 6.2 | Workshops and Events Launched | manual | 10d | 2025-08-03 | 2025-08-14 | 23SS | 2025-08-03 | 2025-08-14 | 10d |  | Admin Staff [500%] | 400h | 37,500 | 2,960 |

| ID | WBS | Task | Type | Duration | Start | Finish | Predecessors | Baseline start | Baseline finish | Baseline duration | Resources | Work | Cost | Baseline cost |
| --- | --- | --- | --- | --- | --- | --- | --- | --- | --- | --- | --- | --- | --- | --- |
| 25 | 7 | **Testing and Readiness** |  | 22d | 2025-08-17 | 2025-09-15 |  | 2025-08-17 | 2025-09-15 | 22d |  | 1056h | 165,000 | 100,320 |
| 26 | 7.1 | Facility Testing and Dry Run | manual | 22d | 2025-08-17 | 2025-09-15 | 24 | 2025-08-17 | 2025-09-15 | 22d | Project Manager; Engineers [500%] | 1056h | 165,000 | 10,560 |
| 27 | 8 | **Project Closure** |  | 11d | 2025-09-16 | 2025-09-30 |  | 2025-09-16 | 2025-09-30 | 11d |  | 568h | 90,000 | 6,600 |
| 28 | 8.1 | Final Project Report | manual | 6d | 2025-09-16 | 2025-09-23 | 26 | 2025-09-16 | 2025-09-23 | 6d | Project Manager; Engineers [500%] | 288h | 45,000 | 3,600 |
| 29 | 8.2 | Post-Implementation Review | manual | 5d | 2025-09-24 | 2025-09-30 | 28 | 2025-09-24 | 2025-09-30 | 5d | Project Manager; Operation Manager; Engineers [500%] | 280h | 45,000 | 3,000 |
